# VÉLO MMO

Schedule from MS Project, 2018-04-03 to 2019-02-19, costs in €.
Externalisation de la fabrication des moteurs éle
VÉLO MMO

## Calendars

- Projet VÉLO MMO: Mon-Fri 09:00-12:00, 13:00-17:00; Sat-Sun off. Exceptions (off unless hours are given): 2018-05-01 to 2022-05-01 (Fête du travail, recurring), 2018-05-08 (Victoire 1945), 2018-05-10 (Ascension), 2018-07-14 to 2022-07-14 (Fête nationale, recurring), 2018-08-01 to 2018-08-07 (Fermeture du site), 2018-08-15 to 2022-08-15 (Assomption , recurring), 2018-11-01 to 2022-11-01 (Toussaint , recurring), 2018-11-11 to 2022-11-11 (Armistice , recurring), 2018-12-25 (Noël), 2019-01-01 to 2023-01-01 (Jour de l'an, recurring).

## Resources

| Resource | Rate |
| --- | --- |
| TEST | 50 |
| test |  |

## Schedule

| ID | WBS | Task | Type | Duration | Start | Finish | Predecessors | Total slack | Free slack | Deadline | Resources | Work | Cost |
| --- | --- | --- | --- | --- | --- | --- | --- | --- | --- | --- | --- | --- | --- |
| 1 | 1 | **Choix du sous-traitant** |  | 62d | 2018-04-03 | 2018-07-13 |  | -23.88d | 0d |  |  | 120h | 6,000 |
| 2 | 1.1 | **Appel d'offre et consultation** |  | 45.5d | 2018-04-03 | 2018-06-18 |  | -23.88d | 0d |  |  | 120h | 6,000 |
| 3 | 1.1.1 | Constitution du cahier des charges |  | 15d | 2018-04-03 | 2018-04-26 |  | -23.88d | 0d |  | TEST | 120h | 6,000 |
| 4 | 1.1.2 | **Test** |  | 32.38d | 2018-04-24 | 2018-06-18 |  |  |  |  |  |  |  |
| 5 | 1.1.2.1 | Sélection des sous-traitants |  | 10d | 2018-04-26 | 2018-05-16 | 3 | -23.88d | 0d |  |  |  |  |
| 6 | 1.1.2.2 | **<New Summary Task>** |  | 20.12d | 2018-05-11 | 2018-06-12 |  |  |  |  |  |  |  |
| 7 | 1.1.2.2.1 | Lancement des appels d’offres |  | 3d | 2018-05-16 | 2018-05-21 | 5 | -23.88d | 0d |  |  |  |  |
| 8 | 1.1.2.2.2 | **<New Summary Task>** |  | 16d | 2018-05-16 | 2018-06-11 |  | -15.88d | 0d |  |  |  |  |
| 9 | 1.1.2.2.2.1 | Etablissement des grilles de sélection du sous-traitant |  | 5d | 2018-05-22 | 2018-05-29 | 7 | -18.88d | 0d |  |  |  |  |
| 10 | 1.1.2.2.2.2 | Définition du processus industriel |  | 10d | 2018-05-22 | 2018-06-06 | 9SS | 150d | 0d |  |  |  |  |
| 11 | 1.1.2.2.2.3 | Choix du processus d’approvisionnement logistique |  | 3d | 2018-06-06 | 2018-06-11 | 10 | 150d |  |  |  |  |  |
| 12 | 1.1.2.2.2.4 | Estimation de prix de référence (prix d’achat) |  | 3d | 2018-05-16 | 2018-05-21 | 5 | -5.88d | 0d |  |  |  |  |
| 13 | 1.2 | Retour des offres des sous-traitants | milestone | 0d | 2018-06-06 | 2018-06-06 | 7FS+10d | -23.88d | 0d | 2018-05-29 |  |  |  |
| 14 | 1.3 | **Analyse et sélection du sous-traitant** |  | 24d | 2018-06-06 | 2018-07-13 |  | -23.88d | 0d |  |  |  |  |
| 15 | 1.3.1 | Revue des offres avec les sous-traitants |  | 8d | 2018-06-06 | 2018-06-19 | 13, 9 | -23.88d | 0d |  |  |  |  |
| 16 | 1.3.2 | Négociation avec les sous-traitants |  | 8d | 2018-06-19 | 2018-07-02 | 15, 12 | -23.88d | 0d |  |  |  |  |
| 17 | 1.3.3 | Sélection d’un sous-traitant |  | 2d | 2018-07-02 | 2018-07-04 | 16 | -23.88d | 0d |  |  |  |  |
| 18 | 1.3.4 | Lancement de la procédure d’agrément du sous-traitant |  | 3d | 2018-07-05 | 2018-07-10 | 17 | -23.88d | 0d |  |  |  |  |
| 19 | 1.3.5 | Lancement de l’analyse des risques |  | 3d | 2018-07-10 | 2018-07-13 | 18 | -23.88d | 0d |  |  |  |  |
| 20 | 1.4 | Signature du contrat d’achat | milestone | 0d | 2018-07-13 | 2018-07-13 | 19 | -23.88d | 0d | 2018-07-02 |  |  |  |
| 21 | 2 | **Industrialisation et validation du sous-traitant** |  | 69d | 2018-07-13 | 2018-11-12 |  | -23.88d | 0d |  |  |  |  |
| 22 | 2.1 | **Préparation de l'industrialisation** |  | 19d | 2018-07-13 | 2018-08-22 |  | -23.88d | 0d |  |  |  |  |
| 23 | 2.1.1 | Réalisation du planning d’industrialisation |  | 5d | 2018-07-13 | 2018-07-23 | 20 | -23.88d | 0d |  |  |  |  |
| 24 | 2.1.2 | Planification des formations du personnel |  | 1d | 2018-07-23 | 2018-07-24 | 23 | -23.88d | 0d |  |  |  |  |
| 25 | 2.1.3 | Identification des besoins de qualification des installations |  | 2d | 2018-07-24 | 2018-07-26 | 24 | -23.88d | 0d |  |  |  |  |
| 26 | 2.1.4 | Initialisation du Dossier de validation industrielle (Budget, programme de validation, planning...) |  | 8d | 2018-07-27 | 2018-08-17 | 25 | -23.88d | 0d |  |  |  |  |
| 27 | 2.1.5 | Commande des pièces de validation (proto) |  | 1d | 2018-08-17 | 2018-08-20 | 26 | -23.88d | 0d |  |  |  |  |
| 28 | 2.1.6 | Téléchargement des logiciels de gestion des commandes |  | 3d | 2018-07-24 | 2018-07-30 | 25SS | -3.88d | 0d |  |  |  |  |
| 29 | 2.1.7 | Installation des logiciels de gestion des commandes |  | 5d | 2018-07-30 | 2018-08-13 | 28 | -3.88d | 0d |  |  |  |  |
| 30 | 2.1.8 | Formation et certification du personnel du sous-traitant |  | 5d | 2018-08-13 | 2018-08-22 | 29 | -3.88d | 0d |  |  |  |  |
| 31 | 2.2 | Réception et validation du proto | milestone | 0d | 2018-09-04 | 2018-09-04 | 27FS+10d | -23.88d | 0d | 2018-08-16 |  |  |  |

| ID | WBS | Task | Type | Duration | Start | Finish | Predecessors | Total slack | Free slack | Deadline |
| --- | --- | --- | --- | --- | --- | --- | --- | --- | --- | --- |
| 32 | 2.3 | **Industrialisation** |  | 50d | 2018-08-22 | 2018-11-12 |  | -23.88d | 0d |  |
| 33 | 2.3.1 | Réalisation de missions technique en support du sous-traitant |  | 30d | 2018-08-22 | 2018-10-09 | 30 | -3.88d | 0d |  |
| 34 | 2.3.2 | Mise en place d’un plan d’assurance qualité produit. |  | 15d | 2018-09-04 | 2018-09-27 | 31 | -23.88d | 0d |  |
| 35 | 2.3.3 | Etudes de Reproductibilité et Répétabilité |  | 10d | 2018-09-27 | 2018-10-15 | 34 | -23.88d | 0d |  |
| 36 | 2.3.4 | Réalisation du premier article |  | 10d | 2018-10-15 | 2018-10-30 | 29, 35 | -23.88d | 0d |  |
| 37 | 2.3.5 | Contrôle des pièces de validation |  | 2d | 2018-10-30 | 2018-11-02 | 36 | -23.88d | 0d |  |
| 38 | 2.3.6 | Finalisation et validation du plan d’assurance qualité produit |  | 5d | 2018-11-05 | 2018-11-12 | 37 | -23.88d | 0d |  |
| 39 | 2.4 | Agrément du sous-traitant | milestone | 0d | 2018-11-12 | 2018-11-12 | 38 | -23.88d | 0d | 2018-10-15 |
| 40 | 3 | **Mise en production** |  | 60d | 2018-11-12 | 2019-02-19 |  | -23.88d | 0d |  |
| 41 | 3.1 | Lancement des pièces de production |  | 20d | 2018-11-12 | 2018-12-13 | 39 | -23.88d | 0d |  |
| 42 | 3.2 | Mise en œuvre de l’assistance au sous-traitant |  | 60d | 2018-11-12 | 2019-02-19 | 33, 41SS | -23.88d | 0d |  |
| 43 | 3.3 | Livraison stabilisée en termes logistique et qualité |  | 40d | 2018-11-28 | 2019-02-01 | 41SS+1%, 42SS+10d | -13.88d | 0d |  |
| 44 | 4 | Obtention du label qualité | milestone | 0d | 2019-02-19 | 2019-02-19 | 43, 42, 41 | -23.88d | 0d | 2019-01-10 |
